# wbs_parece_que_deu_erradov2

Schedule from MS Project, 2019-02-15 to 2019-05-01, costs in R$, A marks actual dates.
SESI SENAI SP

## Calendars

- pushcode: Mon-Fri 07:50-11:24; Sat-Sun 13:00-17:30.

## Resources

| Resource | Rate | Notes |
| --- | --- | --- |
| Programador Web - MK | 28.74 |  |
| Programador Web - LS | 28.74 |  |
| Programador Web - MV | 28.74 |  |
| Programador Web - LB | 28.74 |  |
| DBA - MK | 34.98 |  |
| DBA - LS | 34.98 |  |
| DBA - LB | 34.98 |  |
| DBA - MV | 34.98 |  |
| DBA - GR | 34.98 |  |
| Programador Mobile - MV | 46.34 |  |
| Programador Desktop - GR | 34.94 |  |
| Programador Web - GR | 28.74 |  |
| Coordenador de Projetos GR |  |  |
| Coordenador de Projetos MK |  |  |
| Van Sprinter Mercedes Benz |  | https://sp.olx.com.br/grande-campinas/autos-e-pecas/carros-vans-e-utilitarios/sprinter-2019-0km-415-executiva-elite-new-york-city-preta-510467809 |
| Edifício |  |  |
| Infraestrutura |  |  |

## Schedule

| ID | WBS | Task | Duration | Start | Finish | Predecessors | Complete | Remaining | Total slack | Resources | Work | Actual work | Cost | Actual cost |
| --- | --- | --- | --- | --- | --- | --- | --- | --- | --- | --- | --- | --- | --- | --- |
| 1 | 1 | **Projeto Mob'Share** | 36.25d | 2019-02-15 A | 2019-05-01 |  | 76% | 8.59d | 0d |  | 1981h | 1457.72h | 68,883.5 | 48,698.56 |
| 2 | 1.1 | **Planejamento** | 9.75d | 2019-02-15 A | 2019-03-07 |  | 95% | 0.45d | 22.5d |  | 599h | 577h | 19,199.06 | 18,499.78 |
| 3 | 1.1.1 | **Entendimento do Projeto** | 0.5d | 2019-02-15 A | 2019-02-16 A |  | 100% |  |  |  | 20h | 20h | 670 | 670 |
| 4 | 1.1.1.1 | **Reuniões** | 0.5d | 2019-02-15 A | 2019-02-16 A |  | 100% |  |  |  | 20h | 20h | 670 | 670 |
| 5 | 1.1.1.1.1 | Reunião - sobre o básico do projeto | 2h | 2019-02-15 A | 2019-02-15 A |  | 100% |  |  | Programador Web - LS; Programador Web - MK; Programador Desktop - GR; Programador Mobile - MV; Programador Web - LB | 10h | 10h | 335 | 335 |
| 6 | 1.1.1.1.2 | Reunião - Divisão das partes | 2h | 2019-02-15 A | 2019-02-16 A | 5 | 100% |  |  | Programador Web - LS; Programador Web - MK; Programador Desktop - GR; Programador Mobile - MV; Programador Web - LB | 10h | 10h | 335 | 335 |
| 7 | 1.1.2 | **Levantamento de Requisitos** | 4.25d | 2019-02-16 A | 2019-02-24 A | 3 | 100% |  |  |  | 151h | 151h | 4,863.78 | 4,863.78 |
| 8 | 1.1.2.1 | **Elaboração das perguntas** | 1d | 2019-02-16 A | 2019-02-18 A |  | 100% |  |  |  | 38h | 38h | 1,139.72 | 1,139.72 |
| 9 | 1.1.2.1.1 | Web | 6h | 2019-02-16 A | 2019-02-17 A |  | 100% |  |  | Programador Web - GR; Programador Web - LB; Programador Web - LS; Programador Web - MK; Programador Web - MV | 30h | 30h | 862.2 | 862.2 |
| 10 | 1.1.2.1.2 | Mobile | 2h | 2019-02-17 A | 2019-02-18 A | 9 | 100% |  |  | Programador Mobile - MV; Programador Web - MK | 4h | 4h | 150.16 | 150.16 |
| 11 | 1.1.2.1.3 | Desktop | 2h | 2019-02-17 A | 2019-02-18 A | 9 | 100% |  |  | Programador Desktop - GR; Programador Web - MK | 4h | 4h | 127.36 | 127.36 |
| 12 | 1.1.2.2 | **Cliente - Reunião** | 0.88d | 2019-02-18 A | 2019-02-20 A | 8 | 100% |  |  |  | 45h | 45h | 1,543.14 | 1,543.14 |
| 13 | 1.1.2.2.1 | Reunião WEB | 2h | 2019-02-18 A | 2019-02-18 A |  | 100% |  |  | Programador Web - GR; Programador Web - LB; Programador Web - LS; Programador Web - MK; Programador Web - MV; DBA - GR; DBA - LB; DBA - LS; DBA - MK; DBA - MV; Van Sprinter Mercedes Benz | 20h | 20h | 647.2 | 647.2 |
| 14 | 1.1.2.2.2 | Reunião WEB - 2 | 1h | 2019-02-18 A | 2019-02-19 A | 13 | 100% |  |  | Programador Web - GR; Programador Web - LB; Programador Web - LS; Programador Web - MK; Programador Web - MV; Van Sprinter Mercedes Benz | 5h | 5h | 153.7 | 153.7 |
| 15 | 1.1.2.2.3 | Reunião Desktop | 2h | 2019-02-19 A | 2019-02-19 A | 14 | 100% |  |  | Programador Desktop - GR; DBA - LB; DBA - LS; DBA - MK; DBA - MV; Van Sprinter Mercedes Benz | 10h | 10h | 359.72 | 359.72 |
| 16 | 1.1.2.2.4 | Reunião Mobile | 2h | 2019-02-19 A | 2019-02-20 A | 15 | 100% |  |  | DBA - GR; DBA - LB; DBA - LS; DBA - MK; Programador Mobile - MV; Van Sprinter Mercedes Benz | 10h | 10h | 382.52 | 382.52 |
| 17 | 1.1.2.3 | **Documentação das Reuniões** | 2.38d | 2019-02-20 A | 2019-02-24 A | 12 | 100% |  |  |  | 68h | 68h | 2,180.92 | 2,180.92 |
| 18 | 1.1.2.3.1 | **Web** | 1d | 2019-02-20 A | 2019-02-22 A | 13, 14 | 100% |  |  |  | 8h | 8h | 229.92 | 229.92 |
| 19 | 1.1.2.3.1.1 | RF | 4h | 2019-02-20 A | 2019-02-21 A |  | 100% |  |  | Programador Web - MV | 4h | 4h | 114.96 | 114.96 |
| 20 | 1.1.2.3.1.2 | RNF | 4h | 2019-02-21 A | 2019-02-22 A | 19 | 100% |  |  | Programador Web - MK | 4h | 4h | 114.96 | 114.96 |
| 21 | 1.1.2.3.2 | **Mobile** | 0.25d | 2019-02-22 A | 2019-02-22 A | 18, 16 | 100% |  |  |  | 2h | 2h | 57.48 | 57.48 |
| 22 | 1.1.2.3.2.1 | RF | 2h | 2019-02-22 A | 2019-02-22 A |  | 100% |  |  | Programador Web - MK | 2h | 2h | 57.48 | 57.48 |
| 23 | 1.1.2.3.3 | **Desktop** | 0.25d | 2019-02-22 A | 2019-02-22 A | 18, 15 | 100% |  |  |  | 4h | 4h | 127.36 | 127.36 |
| 24 | 1.1.2.3.3.1 | RF | 2h | 2019-02-22 A | 2019-02-22 A |  | 100% |  |  | Programador Desktop - GR; Programador Web - MK | 4h | 4h | 127.36 | 127.36 |
| 25 | 1.1.2.3.4 | ATAs | 9h | 2019-02-22 A | 2019-02-24 A | 18, 21, 23 | 100% |  |  | Programador Desktop - GR; Programador Mobile - MV; Programador Web - GR; Programador Web - LB; Programador Web - MK; Programador Web - MV | 54h | 54h | 1,766.16 | 1,766.16 |

| ID | WBS | Task | Duration | Start | Finish | Predecessors | Complete | Remaining | Total slack | Free slack | Resources | Work | Actual work | Cost | Actual cost |
| --- | --- | --- | --- | --- | --- | --- | --- | --- | --- | --- | --- | --- | --- | --- | --- |
| 26 | 1.1.3 | **Documentação do projeto** | 5d | 2019-02-24 A | 2019-03-07 | 7 | 87% | 0.65d | 22.5d |  |  | 171h | 149h | 5,976.78 | 5,277.5 |
| 27 | 1.1.3.1 | WBS | 17h | 2019-02-24 A | 2019-03-01 A |  | 100% |  |  |  | Coordenador de Projetos GR; Coordenador de Projetos MK | 34h | 34h | 1,700 | 1,700 |
| 28 | 1.1.3.2 | Cronograma | 1h | 2019-03-01 A | 2019-03-01 A | 27 | 100% |  |  |  | Programador Desktop - GR; Programador Mobile - MV; Programador Web - MK | 3h | 3h | 110.02 | 110.02 |
| 29 | 1.1.3.3 | Aceite do Cliente | 2h | 2019-03-01 A | 2019-03-02 A | 28 | 100% |  |  |  | Programador Web - MK; Programador Desktop - GR; Programador Mobile - MV | 6h | 6h | 220.04 | 220.04 |
| 30 | 1.1.3.4 | Escopo do Projeto | 1d | 2019-03-02 A | 2019-03-04 A | 29 | 100% |  |  |  | Programador Web - LB; Programador Web - LS; Programador Web - MV | 24h | 24h | 689.76 | 689.76 |
| 31 | 1.1.3.5 | Escopo do Produto | 1d | 2019-03-04 A | 2019-03-06 A | 30 | 100% |  |  |  | Programador Web - LS | 8h | 8h | 229.92 | 229.92 |
| 32 | 1.1.3.6 | Dicionário de Dados | 4h | 2019-03-06 A | 2019-03-07 A | 31 | 100% |  |  |  | Programador Web - LB; Programador Web - LS | 8h | 8h | 229.92 | 229.92 |
| 33 | 1.1.3.7 | **Manual do Usuário** | 4.12d | 2019-02-24 A | 2019-03-05 |  | 75% | 1.03d | 23.38d |  |  | 88h | 66h | 2,797.12 | 2,097.84 |
| 34 | 1.1.3.7.1 | Manual Web | 21h | 2019-02-24 A | 2019-03-02 |  | 75% | 5.25h | 1.03d | 0d | Programador Web - GR; Programador Web - MK | 42h | 31.5h | 1,207.08 | 905.31 |
| 35 | 1.1.3.7.2 | Manual do Mobile | 11h | 2019-03-02 A | 2019-03-05 | 34 | 75% | 2.75h | 23.5d |  | Programador Mobile - MV; Programador Web - MK | 22h | 16.5h | 825.88 | 619.41 |
| 36 | 1.1.3.7.3 | Manual do Desktop | 12h | 2019-03-02 A | 2019-03-05 | 34 | 75% | 3h | 23.38d |  | Programador Desktop - GR; Programador Web - MK | 24h | 18h | 764.16 | 573.12 |
| 37 | 1.1.4 | **Wireframes** | 3.75d | 2019-02-24 A | 2019-03-04 A | 7 | 100% |  |  |  |  | 209h | 209h | 6,068.66 | 6,068.66 |
| 38 | 1.1.4.1 | **Web** | 3.5d | 2019-02-24 A | 2019-03-04 A |  | 100% |  |  |  |  | 189h | 189h | 5,431.86 | 5,431.86 |
| 39 | 1.1.4.1.1 | **Site** | 1.38d | 2019-02-24 A | 2019-02-28 A |  | 100% |  |  |  |  | 55h | 55h | 1,580.7 | 1,580.7 |
| 40 | 1.1.4.1.1.1 | Paginas | 11h | 2019-02-24 A | 2019-02-28 A |  | 100% |  |  |  | Programador Web - GR; Programador Web - LB; Programador Web - LS; Programador Web - MK; Programador Web - MV | 55h | 55h | 1,580.7 | 1,580.7 |
| 41 | 1.1.4.1.2 | **Painel do usuário** | 2.12d | 2019-02-28 A | 2019-03-04 A | 39 | 100% |  |  |  |  | 70h | 70h | 2,011.8 | 2,011.8 |
| 42 | 1.1.4.1.2.1 | Edição de perfil do usuário | 3h | 2019-02-28 A | 2019-02-28 A |  | 100% |  |  |  | Programador Web - GR; Programador Web - LB; Programador Web - LS; Programador Web - MK; Programador Web - MV | 15h | 15h | 431.1 | 431.1 |
| 43 | 1.1.4.1.2.2 | Gerenciamento de veículo | 3h | 2019-02-28 A | 2019-03-01 A | 42 | 100% |  |  |  | Programador Web - LB; Programador Web - LS; Programador Web - MK; Programador Web - MV | 12h | 12h | 344.88 | 344.88 |
| 44 | 1.1.4.1.2.3 | Gerenciamento de anúncios | 4h | 2019-03-01 A | 2019-03-02 A | 43 | 100% |  |  |  | Programador Web - LB; Programador Web - LS; Programador Web - MK; Programador Web - MV | 16h | 16h | 459.84 | 459.84 |
| 45 | 1.1.4.1.2.4 | Gerenciamento de locações - Meus veículos | 3h | 2019-03-02 A | 2019-03-03 A | 43, 44 | 100% |  |  |  | Programador Web - LB; Programador Web - LS; Programador Web - MK; Programador Web - MV | 12h | 12h | 344.88 | 344.88 |
| 46 | 1.1.4.1.2.5 | Minhas Corridas | 3h | 2019-03-03 A | 2019-03-03 A | 45 | 100% |  |  |  | Programador Web - LB; Programador Web - LS; Programador Web - MK; Programador Web - MV | 12h | 12h | 344.88 | 344.88 |
| 47 | 1.1.4.1.2.6 | Conversas | 1h | 2019-03-03 A | 2019-03-04 A | 46 | 100% |  |  |  | Programador Web - LB; Programador Web - LS; Programador Web - MK | 3h | 3h | 86.22 | 86.22 |
| 48 | 1.1.4.1.3 | **CMS** | 1.12d | 2019-02-28 A | 2019-03-02 A | 39 | 100% |  |  |  |  | 64h | 64h | 1,839.36 | 1,839.36 |
| 49 | 1.1.4.1.3.1 | Home | 3h | 2019-02-28 A | 2019-02-28 A |  | 100% |  |  |  | Programador Web - MK; Programador Web - MV | 6h | 6h | 172.44 | 172.44 |
| 50 | 1.1.4.1.3.2 | Gerenciamento de Paginas | 3h | 2019-02-28 A | 2019-03-01 A | 49 | 100% |  |  |  | Programador Web - MK; Programador Web - LB | 6h | 6h | 172.44 | 172.44 |
| 51 | 1.1.4.1.3.3 | Gerenciamento de usuários | 2h | 2019-02-28 A | 2019-03-01 A | 49 | 100% |  |  |  | Programador Web - MK; Programador Web - MV; Programador Web - LB; Programador Web - LS | 8h | 8h | 229.92 | 229.92 |
| 52 | 1.1.4.1.3.4 | Gerenciamento de Veículos | 2h | 2019-03-01 A | 2019-03-01 A | 49, 51 | 100% |  |  |  | Programador Web - MK; Programador Web - MV; Programador Web - LB; Programador Web - LS | 8h | 8h | 229.92 | 229.92 |
| 53 | 1.1.4.1.3.5 | Gerenciamento de anúncios | 2h | 2019-03-01 A | 2019-03-02 A | 49, 52 | 100% |  |  |  | Programador Web - MK; Programador Web - MV; Programador Web - LB; Programador Web - LS | 8h | 8h | 229.92 | 229.92 |
| 54 | 1.1.4.1.3.6 | Gerenciamento de anúncios de venda | 2h | 2019-03-01 A | 2019-03-02 A | 49, 52 | 100% |  |  |  | Programador Web - MK; Programador Web - MV; Programador Web - LB; Programador Web - LS | 8h | 8h | 229.92 | 229.92 |
| 55 | 1.1.4.1.3.7 | Gerenciamento de Clientes | 2h | 2019-03-01 A | 2019-03-01 A | 49, 51 | 100% |  |  |  | Programador Web - MK; Programador Web - MV; Programador Web - LB; Programador Web - LS | 8h | 8h | 229.92 | 229.92 |
| 56 | 1.1.4.1.3.8 | Gerenciamento de Fale Conosco | 2h | 2019-03-01 A | 2019-03-01 A | 49, 51 | 100% |  |  |  | Programador Web - MK; Programador Web - MV; Programador Web - LB; Programador Web - LS | 8h | 8h | 229.92 | 229.92 |
| 57 | 1.1.4.1.3.9 | Página de E-mails | 1h | 2019-03-01 A | 2019-03-02 A | 49, 56, 51 | 100% |  |  |  | Programador Web - LB; Programador Web - LS; Programador Web - MK; Programador Web - MV | 4h | 4h | 114.96 | 114.96 |
| 58 | 1.1.4.2 | Desktop | 10h | 2019-02-24 A | 2019-02-27 A |  | 100% |  |  |  | Programador Desktop - GR | 10h | 10h | 349.4 | 349.4 |
| 59 | 1.1.4.3 | Mobile | 10h | 2019-03-02 A | 2019-03-04 A | 48 | 100% |  |  |  | Programador Web - MV | 10h | 10h | 287.4 | 287.4 |

| ID | WBS | Task | Duration | Start | Finish | Predecessors | Complete | Remaining | Total slack | Resources | Work | Actual work | Cost | Actual cost |
| --- | --- | --- | --- | --- | --- | --- | --- | --- | --- | --- | --- | --- | --- | --- |
| 60 | 1.1.5 | **Embasamento teórico** | 4d | 2019-02-16 A | 2019-02-24 A | 3 | 100% |  |  |  | 32h | 32h | 1,110.08 | 1,110.08 |
| 61 | 1.1.5.1 | Embasamento Banco de Dados | 1d | 2019-02-16 A | 2019-02-18 A |  | 100% |  |  | Programador Web - MK | 8h | 8h | 229.92 | 229.92 |
| 62 | 1.1.5.2 | Embasamento Web | 1d | 2019-02-18 A | 2019-02-20 A | 61 | 100% |  |  | Programador Web - GR | 8h | 8h | 229.92 | 229.92 |
| 63 | 1.1.5.3 | Embasamento Desktop | 1d | 2019-02-20 A | 2019-02-22 A | 62 | 100% |  |  | Programador Desktop - GR | 8h | 8h | 279.52 | 279.52 |
| 64 | 1.1.5.4 | Embasamento Mobile | 1d | 2019-02-22 A | 2019-02-24 A | 63 | 100% |  |  | Programador Mobile - MV | 8h | 8h | 370.72 | 370.72 |
| 65 | 1.1.6 | **UML** | 2d | 2019-02-24 A | 2019-03-01 A | 7 | 100% |  |  |  | 16h | 16h | 509.76 | 509.76 |
| 66 | 1.1.6.1 | Diagrama de caso de uso | 1d | 2019-02-24 A | 2019-02-27 A |  | 100% |  |  | Programador Web - LS | 8h | 8h | 229.92 | 229.92 |
| 67 | 1.1.6.2 | Diagrama de classes | 1d | 2019-02-27 A | 2019-03-01 A | 66 | 100% |  |  | DBA - GR | 8h | 8h | 279.84 | 279.84 |
| 68 | 1.2 | **Desenvolvimento** | 27.5d | 2019-02-24 A | 2019-04-23 | 3, 7 | 73% | 7.56d | 0d |  | 1254h | 856.72h | 45,184.92 | 29,409.5 |
| 69 | 1.2.1 | **Banco de Dados** | 4.12d | 2019-02-24 A | 2019-03-05 A | 3, 7 | 100% |  |  |  | 149h | 149h | 5,212.02 | 5,212.02 |
| 70 | 1.2.1.1 | Modelo Conceitual | 12h | 2019-02-24 A | 2019-02-28 A |  | 100% |  |  | DBA - GR; DBA - LB; DBA - LS; DBA - MK; DBA - MV | 60h | 60h | 2,098.8 | 2,098.8 |
| 71 | 1.2.1.2 | Modelo Lógico | 16h | 2019-02-28 A | 2019-03-04 A | 70 | 100% |  |  | DBA - GR; DBA - LB; DBA - LS; DBA - MK; DBA - MV | 80h | 80h | 2,798.4 | 2,798.4 |
| 72 | 1.2.1.3 | Modelo Físico | 1h | 2019-03-04 A | 2019-03-04 A | 71 | 100% |  |  | DBA - GR; DBA - LB; DBA - LS; DBA - MK; DBA - MV | 5h | 5h | 174.9 | 174.9 |
| 73 | 1.2.1.4 | Dicionário de Dados | 4h | 2019-03-04 A | 2019-03-05 A | 72 | 100% |  |  | DBA - LS | 4h | 4h | 139.92 | 139.92 |
| 74 | 1.2.2 | **Web** | 23.38d | 2019-03-05 A | 2019-04-23 | 69 | 83% | 4.07d | 0d |  | 480h | 404h | 13,826.2 | 11,641.96 |
| 75 | 1.2.2.1 | **Site** | 23.38d | 2019-03-05 A | 2019-04-23 |  | 70% | 7.07d | 0d |  | 222h | 160h | 6,411.28 | 4,629.4 |
| 76 | 1.2.2.1.1 | **Paginas** | 10.25d | 2019-03-05 A | 2019-03-27 A |  | 100% |  |  |  | 98h | 98h | 2,816.52 | 2,816.52 |
| 77 | 1.2.2.1.1.1 | Pagina home | 10h | 2019-03-05 A | 2019-03-08 A |  | 100% |  |  | Programador Web - MV | 10h | 10h | 287.4 | 287.4 |
| 78 | 1.2.2.1.1.2 | Fale conosco | 2h | 2019-03-08 A | 2019-03-09 A | 77 | 100% |  |  | Programador Web - MV | 2h | 2h | 57.48 | 57.48 |
| 79 | 1.2.2.1.1.3 | Pagina seja um parceiro | 10h | 2019-03-09 A | 2019-03-11 A | 78 | 100% |  |  | Programador Web - GR | 10h | 10h | 287.4 | 287.4 |
| 80 | 1.2.2.1.1.4 | Pagina sobre a empresa | 1d | 2019-03-11 A | 2019-03-13 A | 79 | 100% |  |  | Programador Web - LB | 8h | 8h | 229.92 | 229.92 |
| 81 | 1.2.2.1.1.5 | Pagina termos de uso | 1d | 2019-03-13 A | 2019-03-15 A | 80 | 100% |  |  | Programador Web - MV | 8h | 8h | 229.92 | 229.92 |
| 82 | 1.2.2.1.1.6 | Pagina melhores avaliações | 7h | 2019-03-15 A | 2019-03-17 A | 81 | 100% |  |  | Programador Web - GR | 7h | 7h | 201.18 | 201.18 |
| 83 | 1.2.2.1.1.7 | Pagina principais Anúncios | 6h | 2019-03-17 A | 2019-03-18 A | 82 | 100% |  |  | Programador Web - GR | 6h | 6h | 172.44 | 172.44 |
| 84 | 1.2.2.1.1.8 | Pagina tabela de Preços | 6h | 2019-03-18 A | 2019-03-20 A | 83 | 100% |  |  | Programador Web - LS | 6h | 6h | 172.44 | 172.44 |
| 85 | 1.2.2.1.1.9 | Pagina de Faq | 5h | 2019-03-20 A | 2019-03-21 A | 84 | 100% |  |  | Programador Web - MV | 5h | 5h | 143.7 | 143.7 |
| 86 | 1.2.2.1.1.10 | Pagina como ganhar dinheiro | 11h | 2019-03-22 A | 2019-03-24 A | 85 | 100% |  |  | Programador Web - LS | 11h | 11h | 316.14 | 316.14 |
| 87 | 1.2.2.1.1.11 | Pagina de cadastro do usuário | 9h | 2019-03-24 A | 2019-03-27 A | 86 | 100% |  |  | Programador Web - GR; Programador Web - MV | 18h | 18h | 517.32 | 517.32 |
| 88 | 1.2.2.1.1.12 | Pagina para visualizar anúncio | 7h | 2019-03-17 A | 2019-03-19 A | 77, 82 | 100% |  |  | Programador Web - MV | 7h | 7h | 201.18 | 201.18 |

| ID | WBS | Task | Duration | Start | Finish | Predecessors | Complete | Remaining | Total slack | Resources | Work | Actual work | Cost | Actual cost |
| --- | --- | --- | --- | --- | --- | --- | --- | --- | --- | --- | --- | --- | --- | --- |
| 89 | 1.2.2.1.2 | **Painel do Usuário** | 13.12d | 2019-03-27 A | 2019-04-23 | 76 | 47% | 7.01d | 0d |  | 124h | 62h | 3,594.76 | 1,812.88 |
| 90 | 1.2.2.1.2.1 | Pagina de edição do perfil do usuário | 10h | 2019-03-27 | 2019-03-29 |  |  |  | 0d | Programador Web - LS | 10h |  | 287.4 |  |
| 91 | 1.2.2.1.2.2 | **Gerenciamento de veículos(CRUD)** | 3.12d | 2019-03-29 A | 2019-04-05 | 125, 90 | 76% | 0.74d | 0d |  | 21h | 16h | 603.54 | 459.84 |
| 92 | 1.2.2.1.2.2.1 | Cadastrar veículo | 7h | 2019-03-29 A | 2019-03-31 |  | 86% | 1h | 2.25d | Programador Web - MV | 7h | 6h | 201.18 | 172.44 |
| 93 | 1.2.2.1.2.2.2 | Lista de veículos | 5h | 2019-03-31 A | 2019-04-01 A | 92 | 100% |  |  | Programador Web - MV | 5h | 5h | 143.7 | 143.7 |
| 94 | 1.2.2.1.2.2.3 | Meus veículos locados | 5h | 2019-04-02 A | 2019-04-04 A | 93 | 100% |  |  | Programador Web - MV | 5h | 5h | 143.7 | 143.7 |
| 95 | 1.2.2.1.2.2.4 | Pagina de estatísticas | 4h | 2019-04-04 | 2019-04-05 | 94 |  |  | 0d | Programador Web - LS | 4h |  | 114.96 |  |
| 96 | 1.2.2.1.2.3 | **Gerenciamento de Anúncios(CRUD)** | 2.5d | 2019-04-05 A | 2019-04-10 | 91 | 52% | 1.21d | 0d |  | 31h | 16h | 921.94 | 490.84 |
| 97 | 1.2.2.1.2.3.1 | Cadastrar Anúncios | 11h | 2019-04-05 A | 2019-04-07 A |  | 100% |  |  | Programador Web - GR | 11h | 11h | 316.14 | 316.14 |
| 98 | 1.2.2.1.2.3.2 | Anuncios com interesse | 5h | 2019-04-07 A | 2019-04-09 A | 97 | 100% |  |  | Programador Desktop - GR | 5h | 5h | 174.7 | 174.7 |
| 99 | 1.2.2.1.2.3.3 | Estatistica | 4h | 2019-04-09 | 2019-04-10 | 98 |  |  | 0d | Programador Web - LS | 4h |  | 114.96 |  |
| 100 | 1.2.2.1.2.3.4 | Anuncio de venda | 11h | 2019-04-05 | 2019-04-07 |  |  |  | 1.12d | Programador Web - LS | 11h |  | 316.14 |  |
| 101 | 1.2.2.1.2.4 | **Gerenciamento de locações - Meus Veiculos** | 3.62d | 2019-04-10 A | 2019-04-18 | 96 | 55% | 1.65d | 0d |  | 33h | 18h | 948.42 | 517.32 |
| 102 | 1.2.2.1.2.4.1 | Pagina de locações em andamento | 9h | 2019-04-10 A | 2019-04-12 A | 98 | 100% |  |  | Programador Web - GR | 9h | 9h | 258.66 | 258.66 |
| 103 | 1.2.2.1.2.4.2 | Agendamento | 9h | 2019-04-12 A | 2019-04-14 A | 102 | 100% |  |  | Programador Web - GR | 9h | 9h | 258.66 | 258.66 |
| 104 | 1.2.2.1.2.4.3 | Avaliações dos locadores | 11h | 2019-04-14 | 2019-04-18 | 103 |  |  | 0d | Programador Web - LS | 11h |  | 316.14 |  |
| 105 | 1.2.2.1.2.4.4 | Estatistica | 4h | 2019-04-12 | 2019-04-13 | 102 |  |  | 2d | Programador Web - LS | 4h |  | 114.96 |  |
| 106 | 1.2.2.1.2.5 | **Minhas Corridas** | 1.25d | 2019-04-18 A | 2019-04-20 | 101 | 40% | 0.75d | 0d |  | 18h | 12h | 517.32 | 344.88 |
| 107 | 1.2.2.1.2.5.1 | Carros Alugados | 4h | 2019-04-18 A | 2019-04-19 A |  | 100% |  |  | Programador Web - GR; Programador Web - LB; Programador Web - MV | 12h | 12h | 344.88 | 344.88 |
| 108 | 1.2.2.1.2.5.2 | Avaliações | 2h | 2019-04-19 | 2019-04-19 | 107 |  |  | 0d | Programador Web - LS | 2h |  | 57.48 |  |
| 109 | 1.2.2.1.2.5.3 | Estatitisca | 4h | 2019-04-19 | 2019-04-20 | 108 |  |  | 0d | Programador Web - LS | 4h |  | 114.96 |  |
| 110 | 1.2.2.1.2.6 | Conversas | 11h | 2019-04-20 | 2019-04-23 | 90, 106 |  |  | 0d | Programador Web - LB | 11h |  | 316.14 |  |
| 111 | 1.2.2.2 | **CMS** | 13.5d | 2019-03-05 A | 2019-04-02 |  | 94% | 0.81d | 9.88d |  | 258h | 244h | 7,414.92 | 7,012.56 |
| 112 | 1.2.2.2.1 | Pagina Home do CMS | 22h | 2019-03-05 A | 2019-03-11 A |  | 100% |  |  | Programador Web - MV | 22h | 22h | 632.28 | 632.28 |

| ID | WBS | Task | Type | Duration | Start | Finish | Predecessors | Complete | Remaining | Total slack | Resources | Work | Actual work | Cost | Actual cost |
| --- | --- | --- | --- | --- | --- | --- | --- | --- | --- | --- | --- | --- | --- | --- | --- |
| 113 | 1.2.2.2.2 | **Gerenciamento de Paginas** |  | 3.25d | 2019-03-27 A | 2019-04-02 | 112, 76 | 99% | 0d | 0d |  | 85h | 85h | 2,442.9 | 2,442.9 |
| 114 | 1.2.2.2.2.1 | Gerenciamento de Seja um Parceiro (Crud) |  | 12h | 2019-03-27 A | 2019-03-30 A |  | 100% |  |  | Programador Web - GR | 12h | 12h | 344.88 | 344.88 |
| 115 | 1.2.2.2.2.2 | Gerenciamento de Termos de uso(Crud) |  | 7h | 2019-03-27 A | 2019-03-29 A | 81 | 100% |  |  | Programador Web - LS | 7h | 7h | 201.18 | 201.18 |
| 116 | 1.2.2.2.2.3 | Gerenciamento de Melhores Avaliações |  | 6h | 2019-03-27 A | 2019-03-28 A | 82 | 100% |  |  | Programador Web - GR | 6h | 6h | 172.44 | 172.44 |
| 117 | 1.2.2.2.2.4 | **Gerenciamento de Principais Anúncios** |  | 0d | 2019-03-28 | 2019-03-28 | 116 |  |  | 0d |  |  |  |  |  |
| 118 | 1.2.2.2.2.4.1 | Aprovação de Anúncios de Venda | milestone | 0h | 2019-03-28 | 2019-03-28 |  |  |  | 0d | Programador Web - LS |  |  |  |  |
| 119 | 1.2.2.2.2.5 | Gerenciamento de Faq (Crud) |  | 6h | 2019-03-27 A | 2019-03-28 A | 85 | 100% |  |  | Programador Web - GR; Programador Web - LS | 12h | 12h | 344.88 | 344.88 |
| 120 | 1.2.2.2.2.6 | Gerenciamento de como ganhar dinheiro(Crud) |  | 10h | 2019-03-27 A | 2019-03-29 A | 86 | 100% |  |  | Programador Web - LS | 10h | 10h | 287.4 | 287.4 |
| 121 | 1.2.2.2.2.7 | Gerenciamento de Sobre a Empresa(Crud) |  | 6h | 2019-03-27 A | 2019-03-28 A | 80 | 100% |  |  | Programador Web - GR; Programador Web - LB | 12h | 12h | 344.88 | 344.88 |
| 122 | 1.2.2.2.2.8 | Gerenciamento de Tutorial(Crud) |  | 6h | 2019-03-28 A | 2019-03-30 A | 121 | 100% |  |  | Programador Web - LS | 6h | 6h | 172.44 | 172.44 |
| 123 | 1.2.2.2.2.9 | **Gerenciamento da Home** |  | 2.5d | 2019-03-28 A | 2019-04-02 A | 121 | 100% |  |  |  | 20h | 20h | 574.8 | 574.8 |
| 124 | 1.2.2.2.2.9.1 | Gerenciamento de conteúdo |  | 20h | 2019-03-28 A | 2019-04-02 A |  | 100% |  |  | Programador Web - GR | 20h | 20h | 574.8 | 574.8 |
| 125 | 1.2.2.2.3 | **Gerenciamento de veículos(CRUD)** |  | 7.25d | 2019-03-11 A | 2019-03-26 A | 112 | 100% |  |  |  | 58h | 58h | 1,666.92 | 1,666.92 |
| 126 | 1.2.2.2.3.1 | **Tipo de véiculo(CRUD)** |  | 3.5d | 2019-03-11 A | 2019-03-18 A |  | 100% |  |  |  | 28h | 28h | 804.72 | 804.72 |
| 127 | 1.2.2.2.3.1.1 | Lista tipos de veículos e percentual |  | 8h | 2019-03-11 A | 2019-03-13 A |  | 100% |  |  | Programador Web - GR | 8h | 8h | 229.92 | 229.92 |
| 128 | 1.2.2.2.3.1.2 | Marcas(Crud) |  | 7h | 2019-03-13 A | 2019-03-15 A | 127 | 100% |  |  | Programador Web - GR | 7h | 7h | 201.18 | 201.18 |
| 129 | 1.2.2.2.3.1.3 | Modelos(Crud) |  | 7h | 2019-03-15 A | 2019-03-17 A | 128 | 100% |  |  | Programador Web - GR | 7h | 7h | 201.18 | 201.18 |
| 130 | 1.2.2.2.3.1.4 | Exportação da fip |  | 6h | 2019-03-17 A | 2019-03-18 A | 129 | 100% |  |  | Programador Web - GR | 6h | 6h | 172.44 | 172.44 |
| 131 | 1.2.2.2.3.2 | **Lista de veículos pendentes de aprovação** |  | 2.25d | 2019-03-18 A | 2019-03-23 A | 126 | 100% |  |  |  | 18h | 18h | 517.32 | 517.32 |
| 132 | 1.2.2.2.3.2.1 | Página de visualização |  | 9h | 2019-03-18 A | 2019-03-21 A |  | 100% |  |  | Programador Web - GR | 9h | 9h | 258.66 | 258.66 |
| 133 | 1.2.2.2.3.2.2 | Aprovação de veículos |  | 9h | 2019-03-21 A | 2019-03-23 A | 132 | 100% |  |  | Programador Web - GR | 9h | 9h | 258.66 | 258.66 |
| 134 | 1.2.2.2.3.3 | **Acessórios** |  | 1.5d | 2019-03-23 A | 2019-03-26 A | 131 | 100% |  |  |  | 12h | 12h | 344.88 | 344.88 |
| 135 | 1.2.2.2.3.3.1 | Cadastrar acessório |  | 6h | 2019-03-23 A | 2019-03-24 A |  | 100% |  |  | Programador Web - GR | 6h | 6h | 172.44 | 172.44 |
| 136 | 1.2.2.2.3.3.2 | Lista de acessórios |  | 6h | 2019-03-24 A | 2019-03-26 A | 135 | 100% |  |  | Programador Web - GR | 6h | 6h | 172.44 | 172.44 |

| ID | WBS | Task | Duration | Start | Finish | Predecessors | Complete | Remaining | Total slack | Free slack | Resources | Work | Actual work | Cost | Actual cost |
| --- | --- | --- | --- | --- | --- | --- | --- | --- | --- | --- | --- | --- | --- | --- | --- |
| 137 | 1.2.2.2.4 | **Gerenciamento de Anúncios** | 1.88d | 2019-03-26 A | 2019-03-30 A | 125, 112 | 100% |  |  |  |  | 15h | 15h | 431.1 | 431.1 |
| 138 | 1.2.2.2.4.1 | Aprovação de Anuncio | 6h | 2019-03-26 A | 2019-03-28 A |  | 100% |  |  |  | Programador Web - GR | 6h | 6h | 172.44 | 172.44 |
| 139 | 1.2.2.2.4.2 | Lista de Aprovados | 9h | 2019-03-28 A | 2019-03-30 A | 138 | 100% |  |  |  | Programador Web - GR | 9h | 9h | 258.66 | 258.66 |
| 140 | 1.2.2.2.5 | **Gerenciamento de Anuncio de Vendas** | 1.75d | 2019-03-26 | 2019-03-30 | 125, 112 |  |  | 11.62d |  |  | 14h |  | 402.36 |  |
| 141 | 1.2.2.2.5.1 | Aprovação de Anuncio de Vendas | 6h | 2019-03-26 | 2019-03-28 |  |  |  | 11.62d | 0d | Programador Web - LS | 6h |  | 172.44 |  |
| 142 | 1.2.2.2.5.2 | Lista - Anuncio de Vendas | 1d | 2019-03-28 | 2019-03-30 | 141 |  |  | 11.62d |  | Programador Web - LS | 8h |  | 229.92 |  |
| 143 | 1.2.2.2.6 | **Gerenciamento de Clientes** | 1d | 2019-03-11 A | 2019-03-13 A | 112 | 100% |  |  |  |  | 8h | 8h | 229.92 | 229.92 |
| 144 | 1.2.2.2.6.1 | Lista de clientes ativados/desativados | 1d | 2019-03-11 A | 2019-03-13 A |  | 100% |  |  |  | Programador Web - LB | 8h | 8h | 229.92 | 229.92 |
| 145 | 1.2.2.2.7 | **Gerenciamento de usuário(CRUD)** | 2.25d | 2019-03-11 A | 2019-03-16 A | 112 | 100% |  |  |  |  | 18h | 18h | 517.32 | 517.32 |
| 146 | 1.2.2.2.7.1 | Cadastrar Nível | 9h | 2019-03-11 A | 2019-03-13 A |  | 100% |  |  |  | Programador Web - MV | 9h | 9h | 258.66 | 258.66 |
| 147 | 1.2.2.2.7.2 | Cadastrar Usuário | 9h | 2019-03-13 A | 2019-03-16 A | 146 | 100% |  |  |  | Programador Web - GR | 9h | 9h | 258.66 | 258.66 |
| 148 | 1.2.2.2.8 | **Gerenciamento de fale conosco** | 0.75d | 2019-03-11 A | 2019-03-12 A | 112, 78 | 100% |  |  |  |  | 12h | 12h | 344.88 | 344.88 |
| 149 | 1.2.2.2.8.1 | Lista de E-mails | 6h | 2019-03-11 A | 2019-03-12 A |  | 100% |  |  |  | Programador Web - GR; Programador Web - LS | 12h | 12h | 344.88 | 344.88 |
| 150 | 1.2.2.2.9 | **Pagina de Emails** | 2.25d | 2019-03-27 A | 2019-03-31 A | 112, 76 | 100% |  |  |  |  | 26h | 26h | 747.24 | 747.24 |
| 151 | 1.2.2.2.9.1 | Lista de Emails | 1d | 2019-03-27 A | 2019-03-29 A | 127 | 100% |  |  |  | Programador Web - GR; Programador Web - LS | 16h | 16h | 459.84 | 459.84 |
| 152 | 1.2.2.2.9.2 | Envio de email | 10h | 2019-03-29 A | 2019-03-31 A | 151 | 100% |  |  |  | Programador Web - GR | 10h | 10h | 287.4 | 287.4 |
| 153 | 1.2.3 | **Mobile** | 15.38d | 2019-03-05 A | 2019-04-06 | 69 | 47% | 8.19d | 8d |  | Programador Mobile - MV | 378h | 170.5h | 17,516.52 | 7,900.82 |
| 154 | 1.2.3.1 | API | 45h | 2019-03-05 A | 2019-03-17 A |  | 100% |  |  |  | Programador Mobile - MV | 45h | 45h | 2,085.3 | 2,085.3 |
| 155 | 1.2.3.2 | **Autenticação** | 2d | 2019-03-17 A | 2019-03-21 A | 154 | 100% |  |  |  | Programador Mobile - MV | 32h | 32h | 1,482.88 | 1,482.88 |
| 156 | 1.2.3.2.1 | Cadastro | 10h | 2019-03-17 A | 2019-03-20 A |  | 100% |  |  |  | Programador Mobile - MV | 10h | 10h | 463.4 | 463.4 |
| 157 | 1.2.3.2.2 | Login | 6h | 2019-03-20 A | 2019-03-21 A | 156 | 100% |  |  |  | Programador Mobile - MV | 6h | 6h | 278.04 | 278.04 |
| 158 | 1.2.3.3 | **anúncios** | 2.25d | 2019-03-21 A | 2019-03-26 A | 155 | 100% |  |  |  | Programador Mobile - MV | 36h | 36h | 1,668.24 | 1,668.24 |
| 159 | 1.2.3.3.1 | Filtro | 10h | 2019-03-21 A | 2019-03-24 A |  | 100% |  |  |  | Programador Mobile - MV | 10h | 10h | 463.4 | 463.4 |
| 160 | 1.2.3.3.2 | visualização | 1d | 2019-03-24 A | 2019-03-26 A | 159 | 100% |  |  |  | Programador Mobile - MV | 8h | 8h | 370.72 | 370.72 |
| 161 | 1.2.3.4 | Mapas (Home) | 12h | 2019-03-26 | 2019-03-29 | 158, 154 |  |  | 12d |  | Programador Mobile - MV | 12h |  | 556.08 |  |
| 162 | 1.2.3.5 | Edição de perfil | 10h | 2019-03-21 | 2019-03-24 | 155 |  |  | 14.5d |  | Programador Mobile - MV | 10h |  | 463.4 |  |

| ID | WBS | Task | Duration | Start | Finish | Predecessors | Complete | Remaining | Total slack | Free slack | Resources | Work | Actual work | Cost | Actual cost |
| --- | --- | --- | --- | --- | --- | --- | --- | --- | --- | --- | --- | --- | --- | --- | --- |
| 163 | 1.2.3.6 | **Gerenciamento de locações** | 2.75d | 2019-03-26 | 2019-03-31 | 158, 154 |  |  | 7.62d | 0d | Programador Mobile - MV | 44h |  | 2,038.96 |  |
| 164 | 1.2.3.6.1 | Meus veículos locados | 1d | 2019-03-26 | 2019-03-28 |  |  |  | 7.62d | 0d | Programador Mobile - MV | 8h |  | 370.72 |  |
| 165 | 1.2.3.6.2 | Locações Realizadas | 7h | 2019-03-28 | 2019-03-30 | 164 |  |  | 7.62d | 0d | Programador Mobile - MV | 7h |  | 324.38 |  |
| 166 | 1.2.3.6.3 | Em andamento | 7h | 2019-03-30 | 2019-03-31 | 165 |  |  | 7.62d |  | Programador Mobile - MV | 7h |  | 324.38 |  |
| 167 | 1.2.3.7 | **Tela de avaliações** | 1.75d | 2019-03-31 | 2019-04-04 | 158, 163 |  |  | 8d | 0d | Programador Mobile - MV | 28h |  | 1,297.52 |  |
| 168 | 1.2.3.7.1 | Veículos Locados | 7h | 2019-03-31 | 2019-04-02 |  |  |  | 8d | 0d | Programador Mobile - MV | 7h |  | 324.38 |  |
| 169 | 1.2.3.7.2 | Veículos Alugados | 7h | 2019-04-02 | 2019-04-04 | 168 |  |  | 8d |  | Programador Mobile - MV | 7h |  | 324.38 |  |
| 170 | 1.2.3.8 | **Finalizar locação** | 2d | 2019-03-31 | 2019-04-05 | 163, 154 |  |  | 7.62d | 0d | Programador Mobile - MV | 32h |  | 1,482.88 |  |
| 171 | 1.2.3.8.1 | Avaliação | 1d | 2019-03-31 | 2019-04-03 |  |  |  | 7.62d | 0d | Programador Mobile - MV | 8h |  | 370.72 |  |
| 172 | 1.2.3.8.2 | Pagamento | 1d | 2019-04-03 | 2019-04-05 | 171 |  |  | 7.62d |  | Programador Mobile - MV | 8h |  | 370.72 |  |
| 173 | 1.2.3.9 | Chat | 1d | 2019-03-26 | 2019-03-28 | 158, 154 |  |  | 12.5d |  | Programador Mobile - MV | 8h |  | 370.72 |  |
| 174 | 1.2.3.10 | Ranking de anuncios | 1d | 2019-04-04 | 2019-04-06 | 158, 167 |  |  | 8d |  | Programador Mobile - MV | 8h |  | 370.72 |  |
| 175 | 1.2.4 | **Desktop** | 15.75d | 2019-03-05 A | 2019-04-07 | 69 | 60% | 6.22d | 7.62d |  | Programador Desktop - GR | 247h | 133.22h | 8,630.18 | 4,654.71 |
| 176 | 1.2.4.1 | Tela principal | 14h | 2019-03-05 A | 2019-03-09 A |  | 100% |  |  |  | Programador Desktop - GR | 14h | 14h | 489.16 | 489.16 |
| 177 | 1.2.4.2 | Tela de usuários(Crud) | 10h | 2019-03-09 A | 2019-03-11 A | 176 | 100% |  |  |  | Programador Desktop - GR | 10h | 10h | 349.4 | 349.4 |
| 178 | 1.2.4.3 | Tela de Funcionarios | 7h | 2019-03-11 A | 2019-03-13 A | 177 | 100% |  |  |  | Programador Desktop - GR | 7h | 7h | 244.58 | 244.58 |
| 179 | 1.2.4.4 | Tela de cadastro de Pedido de compra | 10h | 2019-03-11 A | 2019-03-14 A | 177 | 100% |  |  |  | Programador Desktop - GR | 10h | 10h | 349.4 | 349.4 |
| 180 | 1.2.4.5 | **Tela de conciliação bancaria** | 2.38d | 2019-03-11 A | 2019-03-16 | 177 | 42% | 1.38d | 16.5d | 0d | Programador Desktop - GR | 38h | 16h | 1,327.72 | 559.04 |
| 181 | 1.2.4.5.1 | bancos | 4h | 2019-03-11 A | 2019-03-12 A |  | 100% |  |  |  | Programador Desktop - GR | 4h | 4h | 139.76 | 139.76 |
| 182 | 1.2.4.5.2 | contas | 4h | 2019-03-12 A | 2019-03-14 A | 181 | 100% |  |  |  | Programador Desktop - GR | 4h | 4h | 139.76 | 139.76 |
| 183 | 1.2.4.5.3 | transações | 9h | 2019-03-14 | 2019-03-16 | 182 |  |  | 16.5d | 0d | Programador Desktop - GR | 9h |  | 314.46 |  |
| 184 | 1.2.4.5.4 | Exportação | 2h | 2019-03-16 | 2019-03-16 | 183 |  |  | 16.5d |  | Programador Desktop - GR | 2h |  | 69.88 |  |
| 185 | 1.2.4.6 | **Tela de Contas a pagar** | 1.5d | 2019-03-16 | 2019-03-20 | 180, 179 |  |  | 16.5d |  | Programador Desktop - GR | 24h |  | 838.56 |  |
| 186 | 1.2.4.6.1 | Exportação | 2h | 2019-03-16 | 2019-03-17 |  |  |  | 16.5d | 0d | Programador Desktop - GR | 2h |  | 69.88 |  |
| 187 | 1.2.4.6.2 | Conciliar | 5h | 2019-03-17 | 2019-03-18 | 186 |  |  | 16.5d | 0d | Programador Desktop - GR | 5h |  | 174.7 |  |
| 188 | 1.2.4.6.3 | Criar despesas | 5h | 2019-03-18 | 2019-03-20 | 187 |  |  | 16.5d |  | Programador Desktop - GR | 5h |  | 174.7 |  |

| ID | WBS | Task | Duration | Start | Finish | Predecessors | Complete | Remaining | Total slack | Free slack | Resources | Work | Actual work | Cost | Actual cost |
| --- | --- | --- | --- | --- | --- | --- | --- | --- | --- | --- | --- | --- | --- | --- | --- |
| 189 | 1.2.4.7 | **Tela de contas a receber** | 1.12d | 2019-04-05 | 2019-04-07 | 180, 170 |  |  | 7.62d |  | Programador Desktop - GR | 18h |  | 628.92 |  |
| 190 | 1.2.4.7.1 | Conciliar | 7h | 2019-04-05 | 2019-04-07 |  |  |  | 7.62d | 0d | Programador Desktop - GR | 7h |  | 244.58 |  |
| 191 | 1.2.4.7.2 | Exportação | 2h | 2019-04-07 | 2019-04-07 | 190 |  |  | 7.62d |  | Programador Desktop - GR | 2h |  | 69.88 |  |
| 192 | 1.3 | **Encerramento** | 4d | 2019-04-23 A | 2019-05-01 | 68, 2 | 43% | 2.29d | 0d |  |  | 128h | 24h | 4,499.52 | 789.28 |
| 193 | 1.3.1 | **Implementação** | 1d | 2019-04-23 A | 2019-04-25 |  | 75% | 0.25d | 0d |  |  | 32h | 24h | 1,160 | 789.28 |
| 194 | 1.3.1.1 | Banco de dados | 1d | 2019-04-23 A | 2019-04-25 A | 69 | 100% |  |  |  | DBA - GR | 8h | 8h | 279.84 | 279.84 |
| 195 | 1.3.1.2 | Web | 1d | 2019-04-23 A | 2019-04-25 A | 74 | 100% |  |  |  | Programador Web - GR | 8h | 8h | 229.92 | 229.92 |
| 196 | 1.3.1.3 | Desktop | 1d | 2019-04-23 A | 2019-04-25 A | 175 | 100% |  |  |  | Programador Desktop - GR | 8h | 8h | 279.52 | 279.52 |
| 197 | 1.3.1.4 | Mobile | 1d | 2019-04-23 | 2019-04-25 | 153 |  |  | 0d |  | Programador Mobile - MV | 8h |  | 370.72 |  |
| 198 | 1.3.2 | Aceite do Cliente | 1d | 2019-04-25 | 2019-04-27 | 193, 26 |  |  | 0d |  |  |  |  |  |  |
| 199 | 1.3.3 | Apresentação técnica | 1d | 2019-04-27 | 2019-04-29 | 198 |  |  | 0d |  | Programador Web - LB; Programador Web - LS; DBA - GR; DBA - MV; Programador Desktop - GR; Programador Mobile - MV | 48h |  | 1,669.76 |  |
| 200 | 1.3.4 | Apresentação comercial | 1d | 2019-04-29 | 2019-05-01 | 199 |  |  | 0d |  | Programador Web - LB; Programador Web - LS; DBA - GR; DBA - MV; Programador Desktop - GR; Programador Mobile - MV | 48h |  | 1,669.76 |  |
